# Sprints

How a schedule from MS Project changed from version to version. A marks actual dates.

## Version 1 (saved 2025-07-31, file Sprints.mpp)

| ID | WBS | Task | Duration | Start | Finish | Complete | Total float | Constraint |
| --- | --- | --- | --- | --- | --- | --- | --- | --- |
| 2 | 1 | **Sprint 9** | 11d | 2025-07-03 A | 2025-07-17 | 98% | 0d |  |
| 3 |  | PACSH-85672-[DEMO] ACI - CHAPS END-END Validations - [Target dt - 7/17] - PACS.008 STP [ Pacs.009 , pacs,009 cov STP ] | 11d | 2025-07-03 A | 2025-07-17 A | 100% |  |  |
| 4 |  | PACSH-73213-[Document] ACI - Create & Review Bank Adapter Solution document for US Markets | 10d | 2025-07-03 A | 2025-07-16 A | 100% |  |  |
| 5 |  | PACSH-88900-[Working Session] ACI - Enable Repair & Edits CHAPS Outbound payment Processing: Control Center [Target dt - 7/16] before 7/31 | 9d | 2025-07-03 A | 2025-07-16 | 80% |  |  |
| 6 |  | PACSH-87897-[Working Session] ACI - Enable RITS & LYNX Outbound Payment Processing lines in UPF | 10d | 2025-07-03 A | 2025-07-16 A | 100% |  |  |
| 7 |  | PACSH-89240-[Working Session] ACI - US SSB - FED & SSI-FED BTR flow validations - STP & NON STP - PACS009/COV | 10d | 2025-07-03 A | 2025-07-16 A | 100% |  |  |
| 8 |  | PACSH-89246-[Working Session] ACI - US SSI- CHP BTR flow validations - STP & NON STP - PACS009/COV | 9d | 2025-07-03 A | 2025-07-16 A | 100% |  |  |
| 9 |  | PACSH-88861-ACI - Enable CHAPS Outbound Payment Processing lines in MTS [Target dt - 7/13] before 7/31 | 10d | 2025-07-03 A | 2025-07-16 A | 100% |  |  |
| 10 |  | PACSH-91572-ACI - Enable Intl.RTPS Outbound Payment Processing lines in UPF->MTS linkage [Target dt - 7/16] before 7/31 | 10d | 2025-07-03 A | 2025-07-16 A | 100% |  |  |
| 11 |  | PACSH-85674-ACI - Intl. RTPS Code Delivery (UPF & Control Center June SP - Target July 11) [Tech] | 10d | 2025-07-03 A | 2025-07-16 A | 100% |  |  |
| 12 |  | PACSH-89190-ACI CASE 03734528 - CAMT050? GBM-Intl RTPS do external screening via FIRCO for TARGET2 CAMT050? | 10d | 2025-07-03 A | 2025-07-16 A | 100% |  |  |
| 13 |  | H24-679372- GBM Enterprise ISO : IBS NAK equivalent processing in ENTERPRISEISO model (Bank-Adapter Flow) | 1d | 2025-07-16 A | 2025-07-16 A | 100% |  |  |
| 14 | 2 | **Sprint 10** | 11d | 2025-07-16 A | 2025-07-30 | 99% | 0d |  |
| 15 | 2.1 | **PACSH-95796-[Working Session] ACI - Explore the options for displaying Additional Payment Event Details in Control Center Related Tab** | 11d | 2025-07-16 A | 2025-07-30 A | 100% |  |  |
| 16 |  | Generate outbound pacs.008 for CHAPS market end to end with SAA simulated response | 11d | 2025-07-16 A | 2025-07-30 A | 100% |  |  |
| 17 |  | Analyze the message logging in related tab of CC screen | 11d | 2025-07-16 A | 2025-07-30 A | 100% |  |  |
| 18 |  | Identify resolution via UPF rules configuration to align the missing or incorrect message records | 11d | 2025-07-16 A | 2025-07-30 A | 100% |  | finish no earlier than 2025-07-30 |
| 19 | 2.2 | **PACSH-95806-[Working Session] ACI - [CHATS & FISC] Consume Outbound Payment instr MX + send UPF Technical Acknowledgments** | 11d | 2025-07-16 A | 2025-07-30 A | 100% |  |  |
| 20 |  | Configure UPF line with source BIS | 11d | 2025-07-16 A | 2025-07-30 A | 100% |  |  |
| 21 |  | Message Interface (MQ) | 11d | 2025-07-16 A | 2025-07-30 A | 100% |  |  |
| 22 |  | UPF end-point Config | 11d | 2025-07-16 A | 2025-07-30 A | 100% |  |  |
| 23 |  | UPF Channel Config | 11d | 2025-07-16 A | 2025-07-30 A | 100% |  |  |
| 24 |  | Platform Mgr Rules | 11d | 2025-07-16 A | 2025-07-30 A | 100% |  |  |
| 25 | 2.3 | **PACSH-88900-[Working Session] ACI - Enable Repair & Edits CHAPS Outbound payment Processing: Control Center [Target dt - 7/16] before 7/31** | 11d | 2025-07-16 A | 2025-07-30 | 99% |  |  |
| 26 |  | CCU I Q migration | 11d | 2025-07-16 A | 2025-07-30 A | 100% |  |  |
| 27 |  | Location Provitioning | 11d | 2025-07-16 A | 2025-07-30 A | 100% |  |  |
| 28 |  | MTS irm rule changes | 11d | 2025-07-16 A | 2025-07-30 A | 100% |  |  |
| 29 |  | Functional Test Cases - 20 Cases | 11d | 2025-07-16 A | 2025-07-30 A | 100% |  |  |
| 30 |  | PACSH-96347-[Working Session] Validate FIRCO invocation along with the FIRCO RFML request v10 xml generation data for swift.cbprplus.02 and swift.cbprplus.03 | 11d | 2025-07-16 A | 2025-07-30 A | 100% |  |  |
| 31 | 4 | **Strech Sprint 10** | 11d | 2025-07-16 A | 2025-07-30 | 37% | 0d |  |
| 32 | 4.1 | **PACSH-95801-[Working Session] ACI - Solution IBS CAN short NAK to generate Negative Acknowledgements with required payment & error info in RTPS for Manually Cancelled Payments** | 11d | 2025-07-16 A | 2025-07-30 | 5% |  |  |
| 33 |  | Generate pacs.002 CANC scenario for BIS source pacs.008 outbound message(future dated) | 11d | 2025-07-16 A | 2025-07-30 | 20% |  |  |
| 34 |  | Analyze format fields of pacs.002 CANC | 11d | 2025-07-16 | 2025-07-30 |  |  |  |
| 35 |  | Identify RTPS solution(GBM) for enrichment of two missing fields | 11d | 2025-07-16 | 2025-07-30 |  |  |  |
| 36 |  | Check for enrichment rules(configurations) to be applied on the Pacs.002 CANC [BA NAK response] from MTS app config/development team | 11d | 2025-07-16 | 2025-07-30 |  |  |  |
| 37 | 4.2 | **PACSH-79853-[Duplicate?] ACI - Enable FISC & CHATS Outbound Payment Processing lines in UPF - STRECH Story** | 11d | 2025-07-16 A | 2025-07-30 | 50% |  |  |
| 38 |  | Message Interface (MQ) | 11d | 2025-07-16 A | 2025-07-30 A | 100% |  |  |
| 39 |  | Platform Manager | 11d | 2025-07-16 A | 2025-07-30 A | 100% |  |  |
| 40 |  | MTS v6 Code Changes | 11d | 2025-07-16 | 2025-07-30 |  |  |  |
| 41 |  | MTS v6 Config | 11d | 2025-07-16 | 2025-07-30 |  |  |  |
| 42 |  | UPF-MCAS v5.0.4 Code Changes | 11d | 2025-07-16 | 2025-07-30 |  |  |  |
| 43 |  | Control Centre Code Changes | 11d | 2025-07-16 | 2025-07-30 |  |  |  |
| 44 |  | UPF EndpointConfig | 11d | 2025-07-16 A | 2025-07-30 A | 100% |  |  |
| 45 |  | UPF Line Config | 11d | 2025-07-16 A | 2025-07-30 A | 100% |  |  |
| 46 |  | Control Center Config | 11d | 2025-07-16 | 2025-07-30 |  |  |  |
| 47 | 4.2.10 | **PACSH-96296-[STRETCH] [Working Session] ACI - Target 2 Camt.050 processing : end-end validations [using simulated samples]** | 11d | 2025-07-16 A | 2025-07-30 A | 100% |  |  |
| 48 |  | PACSH-96336-Validate incoming camt.025 matching for the outbound camt.050 [using simulated samples] | 11d | 2025-07-16 A | 2025-07-30 A | 100% |  |  |

## Version 2 (saved 2025-08-14, file Sprints-10.mpp)

Last finish 2025-07-30 → 2025-08-13 (+14d). Complete tasks 28 → 32.

Added:

| ID | Task | Duration | Start | Finish | Constraint | Resources |
| --- | --- | --- | --- | --- | --- | --- |
| 32 | **NEW - PACSH-95801-[Working Session] ACI - Solution IBS CAN short NAK to generate Negative Acknowledgements with required payment & error info in RTPS for Manually Cancelled Payments** | 11d | 2025-07-16 A | 2025-07-30 |  |  |
| 49 | **Sprint 11** | 10d? | 2025-07-31 A | 2025-08-13 |  |  |
| 50 | **PACSH-96296-[Working session] ACI - Target2 Camt.050 processing : end-end validations.** | 10d | 2025-07-31 A | 2025-08-13 A |  | Sai |
| 51 | Downloaded the Camt.025 from TARGET2 EBA portal | 10d | 2025-07-31 A | 2025-08-13 A |  | Sai |
| 52 | Validate incoming camt.025 matching for the outbound camt.050 [using simulated samples] | 10d | 2025-07-31 A | 2025-08-13 A |  | Sai |
| 53 | PACSH-95820 ACI Ticket-3713432 -Requirements fo RTPS NY Bank(SSI) to support a new Fedwire ABA | 10d | 2025-07-31 | 2025-08-13 |  | SME / Bank |
| 54 | **PACSH-95825 ACI Ticket-03711383:Requirements fo ACI to configure new SSB IBT Tran codes to support BANK** | 10d? | 2025-07-31 A | 2025-08-13 |  | SME / Bank |
| 55 | ETA for code | 10d | 2025-07-31 A | 2025-08-13 |  | SME |
| 56 | Analyze the requirements | 10d | 2025-07-31 A | 2025-08-13 | finish no earlier than 2025-08-13 | SME |
| 57 | PACSH-98277-Waiting update from ACI(Jessica) on the testing results for Trans | 10d | 2025-07-31 A | 2025-08-13 |  | Dolores |
| 58 | PACSH-82086-[Working Session] ACI - Target 2 pacs.009 [using simulated samples] [One STP & one Non-STP flow] | 10d | 2025-07-31 A | 2025-08-13 A |  | Sai |
| 59 | PACSH-79853 RITS END-END Validations [one STP & one non-STP flow] | 10d | 2025-07-31 A | 2025-08-13 |  | Katheeja |
| 60 | PACSH-87211-[STRETCH-1][Working Session] ACI - LYNX END-END Validations | 10d | 2025-07-31 A | 2025-08-13 A |  | Katheeja |
| 61 | **Sprint 12** | 0d | 2025-07-11 | 2025-07-11 |  |  |
| 62 | PACSH-95820 ACI Ticket-3713432 -Requirements fo RTPS NY Bank(SSI) to support a new Fedwire ABA | 1d | 2025-07-11 | 2025-07-11 |  |  |
| 63 | PACSH-95820 ACI Ticket-3713432 -Requirements fo RTPS NY Bank(SSI) to support a new Fedwire ABA | 1d | 2025-07-11 | 2025-07-11 |  |  |
| 64 | PACSH-98277-Waiting update from ACI(Jessica) on the testing results for Trans | 1d | 2025-07-11 | 2025-07-11 |  |  |
| 65 | <New Task> | 1d? | 2025-07-11 | 2025-07-11 |  |  |
| 66 | <New Task> | 1d? | 2025-07-11 | 2025-07-11 |  |  |
| 67 | <New Task> | 1d? | 2025-07-11 | 2025-07-11 |  |  |
| 69 | Check for enrichment rules(configurations) to be applied on the Pacs.002 CANC [BA NAK response] from MTS app config/development team | 1d | 2025-07-11 | 2025-07-11 |  |  |
| 70 | Identify RTPS solution(GBM) for enrichment of two missing fields | 1d | 2025-07-11 | 2025-07-11 |  |  |
| 71 | Analyze format fields of pacs.002 CANC | 1d | 2025-07-11 | 2025-07-11 |  |  |
| 72 | Generate pacs.002 CANC scenario for BIS source pacs.008 outbound message(future dated) | 1d | 2025-07-11 | 2025-07-11 |  |  |
| 73 | PACSH-84210-Solution IBS CAN short NAK - ACI CASE 3735175 GBM Enterprise ISO : IBS NAK | 1d | 2025-07-11 | 2025-07-11 |  |  |

Changed:

| ID | Task | Start | Finish | Duration | Complete | Total float |
| --- | --- | --- | --- | --- | --- | --- |
| 14 | **Sprint 10** |  | 2025-07-30 A |  | 99% → 100% | 0d → none |
| 25 | **PACSH-88900-[Working Session] ACI - Enable Repair & Edits CHAPS Outbound payment Processing: Control Center [Target dt - 7/16] before 7/31** |  | 2025-07-30 A |  | 99% → 100% |  |
| 68 | **PACSH-95801-[Working Session] ACI - Solution IBS CAN short NAK to generate Negative Acknowledgements with required payment & error info in RTPS for Manually Cancelled Payments** | 2025-07-16 A → 2025-07-11 (-5d) | 2025-07-30 → 2025-07-11 (-19d) | 11d → 0d | 5% → 0% | none → 24d |
